Schedule from MS Project, 2017-06-13 to 2018-03-07, costs in $.

## Calendars

- Standard: Mon-Fri 08:00-12:00, 13:00-17:00; Sat-Sun off.

## Resources

| Resource | Group | Rate |
| --- | --- | --- |
| Adam | SA | 40 |
| Amy | SA | 40 |
| Charles | D | 30 |
| Cathy | D | 30 |
| mark | EA | 50 |
| felix | QARA | 40 |
| Dan | QAD | 30 |
| Sam | QAT | 25 |
| Sue | QAT | 25 |
| Tan | P | 25 |
| Tony | P | 25 |
| User1 | U | 40 |
| User2 | U | 40 |
| User3 | U | 40 |
| User4 | U | 40 |
| User5 | U | 40 |
| User6 | U | 40 |
| User7 | U | 40 |
| User8 | U | 40 |
| User9 | U | 40 |
| User10 | U | 40 |
| User11 | U | 40 |
| User12 | U | 40 |
| User13 | U | 40 |

## Schedule

| ID | WBS | Task | Duration | Start | Finish | Predecessors | Total slack | Free slack | Resources | Work | Cost |
| --- | --- | --- | --- | --- | --- | --- | --- | --- | --- | --- | --- |
| 1 | 1 | **Requirement Analysis** | 36d | 2017-06-13 | 2017-08-01 |  | 0.8d | 0d |  | 1056h | 42,240 |
| 2 | 1.1 | Order Entry | 20d | 2017-06-13 | 2017-07-10 |  | 0.8d | 0d | Adam; User1 | 320h | 12,800 |
| 3 | 1.2 | Inventory | 20d | 2017-06-13 | 2017-07-10 |  | 0.8d | 0d | Amy; User2 | 320h | 12,800 |
| 4 | 1.3 | **Accounting** | 10d | 2017-07-11 | 2017-07-24 |  | 0.8d | 0d |  | 320h | 12,800 |
| 5 | 1.3.1 | Accounting - 1 | 10d | 2017-07-11 | 2017-07-24 | 2, 3 | 0.8d |  | Adam; User1 | 160h | 6,400 |
| 6 | 1.3.2 | Accounting -2 | 10d | 2017-07-11 | 2017-07-24 | 2, 3 | 0.8d |  | Amy; User2 | 160h | 6,400 |
| 7 | 1.4 | Integration | 6d | 2017-07-25 | 2017-08-01 | 4 | 0.8d |  | Amy; User3 | 96h | 3,840 |
| 8 | 2 | Walk-through & Correction | 10d | 2017-08-02 | 2017-08-15 | 1 | 0.8d | 0d | Adam; felix; User4 | 240h | 9,600 |
| 9 | 3 | High-level Design (Architecture) | 10d | 2017-08-02 | 2017-08-15 | 1 | 0.8d | 0d | Amy; Charles; mark | 240h | 9,600 |
| 10 | 4 | DB Design | 15d | 2017-08-16 | 2017-09-05 | 8, 9 | 0.8d | 0d | Cathy; User5 | 240h | 8,400 |
| 11 | 5 | Design Review | 5d | 2017-09-06 | 2017-09-12 | 10 | 120.66d |  | Dan | 40h | 1,200 |
| 12 | 6 | Controls & Security Design | 15d | 2017-09-06 | 2017-09-26 | 10 | 0.8d | 0d | Charles | 120h | 3,600 |
| 13 | 7 | Controls & Security Design Review | 5d | 2017-09-27 | 2017-10-03 | 12 | 105.66d |  | Dan | 40h | 1,200 |
| 14 | 8 | **Human-Machine Interface Prototype** | 3.84d | 2017-09-27 | 2017-10-02 |  | 0.8d | 0d |  | 88.16h | 3,085.6 |
| 15 | 8.1 | Order Entry | 1.67d | 2017-09-27 | 2017-09-28 | 12 | 2.97d |  | Charles; User6 | 26.72h | 935.2 |
| 16 | 8.2 | Inventory | 1.67d | 2017-09-27 | 2017-09-28 | 12 | 0.8d | 0d | Cathy; User7 | 26.72h | 935.2 |
| 17 | 8.3 | Accounting | 1.67d | 2017-09-28 | 2017-10-02 | 16 | 0.8d | 0d | Charles; User6 | 26.72h | 935.2 |
| 18 | 8.4 | Integration | 0.5d | 2017-10-02 | 2017-10-02 | 17 | 0.8d |  | Cathy; User7 | 8h | 280 |
| 19 | 9 | **Human-Machine Interface Design** | 7.66d | 2017-10-02 | 2017-10-12 |  | 0.8d | 0d |  | 175.84h | 6,154.4 |
| 20 | 9.1 | Order Entry | 3.33d | 2017-10-02 | 2017-10-06 | 14 | 0.8d | 0d | Charles; User6 | 53.28h | 1,864.8 |
| 21 | 9.2 | Inventory | 3.33d | 2017-10-02 | 2017-10-06 | 14 | 0.8d | 0d | Cathy; User7 | 53.28h | 1,864.8 |
| 22 | 9.3 | Accounting | 3.33d | 2017-10-06 | 2017-10-11 | 20, 21 | 0.8d | 0d | Charles; User6 | 53.28h | 1,864.8 |
| 23 | 9.4 | Integration | 1d | 2017-10-11 | 2017-10-12 | 22 | 0.8d |  | Cathy; User7 | 16h | 560 |
| 24 | 10 | Human-Machine Interface Design Review | 10d | 2017-10-12 | 2017-10-26 | 19 | 0.8d | 0d | Dan | 80h | 2,400 |

| ID | WBS | Task | Duration | Start | Finish | Predecessors | Total slack | Free slack | Resources | Work | Cost |
| --- | --- | --- | --- | --- | --- | --- | --- | --- | --- | --- | --- |
| 25 | 11 | **Program Design** | 11.5d | 2017-10-26 | 2017-11-10 |  | 0.8d | 0d |  | 132h | 3,960 |
| 26 | 11.1 | Order Entry | 5d | 2017-10-26 | 2017-11-02 | 24 | 0.8d | 0d | Cathy | 40h | 1,200 |
| 27 | 11.2 | Inventory | 5d | 2017-10-26 | 2017-11-02 | 24 | 0.8d | 0d | Charles | 40h | 1,200 |
| 28 | 11.3 | Accounting | 5d | 2017-11-02 | 2017-11-09 | 26, 27 | 0.8d | 0d | Cathy | 40h | 1,200 |
| 29 | 11.4 | Integration | 1.5d | 2017-11-09 | 2017-11-10 | 28 | 0.8d |  | Charles | 12h | 360 |
| 30 | 12 | Program Design Review | 5d | 2017-11-13 | 2017-11-17 | 25 | 0.8d | 0d | Charles; Dan | 80h | 2,400 |
| 31 | 13 | **Unit Coding** | 9.2d | 2017-11-20 | 2017-12-01 |  | 0.8d | 0d |  | 105.6h | 2,640 |
| 32 | 13.1 | Order Entry | 4d | 2017-11-20 | 2017-11-23 | 30 | 0.8d | 0d | Tan | 32h | 800 |
| 33 | 13.2 | Inventory | 4d | 2017-11-20 | 2017-11-23 | 30 | 0.8d | 0d | Tony | 32h | 800 |
| 34 | 13.3 | Accounting | 4d | 2017-11-24 | 2017-11-29 | 32, 33 | 0.8d | 0d | Tan | 32h | 800 |
| 35 | 13.4 | Integration | 1.2d | 2017-11-30 | 2017-12-01 | 34 | 0.8d |  | Tony | 9.6h | 240 |
| 36 | 14 | Test Plan and Scripts | 10d | 2017-12-01 | 2017-12-15 | 31 | 45.8d |  | Sam | 80h | 2,000 |
| 37 | 15 | Unit Code Inspection | 10d | 2017-12-01 | 2017-12-15 | 31 | 0.8d | 0d | Sue | 80h | 2,000 |
| 38 | 16 | **Unit Testing** | 11.5d | 2017-12-15 | 2018-01-01 |  | 0.8d | 0d |  | 132h | 3,300 |
| 39 | 16.1 | Order Entry | 5d | 2017-12-15 | 2017-12-22 | 37 | 0.8d | 0d | Sam | 40h | 1,000 |
| 40 | 16.2 | Inventory | 5d | 2017-12-15 | 2017-12-22 | 37 | 0.8d | 0d | Sue | 40h | 1,000 |
| 41 | 16.3 | Accounting | 5d | 2017-12-22 | 2017-12-29 | 39, 40 | 0.8d | 0d | Sam | 40h | 1,000 |
| 42 | 16.4 | Integration | 1.5d | 2017-12-29 | 2018-01-01 | 41 | 0.8d |  | Sue | 12h | 300 |
| 43 | 17 | Unit Integration | 5d | 2018-01-01 | 2018-01-08 | 38 | 29.3d |  | Tan | 40h | 1,000 |
| 44 | 18 | Integration Testing | 5d | 2018-01-01 | 2018-01-08 | 38 | 0.8d | 0d | Sam | 40h | 1,000 |
| 45 | 19 | Function Testing | 10d | 2018-01-08 | 2018-01-22 | 44 | 0.8d | 0d | Sue | 80h | 2,000 |
| 46 | 20 | System Testing | 5d | 2018-01-08 | 2018-01-15 | 44 | 5.8d | 5d | Sam | 40h | 1,000 |
| 47 | 21 | Field Testing | 7d | 2018-01-22 | 2018-01-31 | 45, 46 | 0.8d | 0d | Sue; User7 | 112h | 3,640 |
| 48 | 22 | Acceptance Testing & Signoff | 7d | 2018-01-31 | 2018-02-09 | 47 | 5.3d |  | Adam; Sam; User8 | 168h | 5,880 |

| ID | WBS | Task | Duration | Start | Finish | Predecessors | Total slack | Free slack | Constraint | Resources | Work | Cost |
| --- | --- | --- | --- | --- | --- | --- | --- | --- | --- | --- | --- | --- |
| 49 | 23 | **User Manual** | 12.3d | 2018-01-31 | 2018-02-16 |  | 0d |  |  |  | 132h | 5,280 |
| 50 | 23.1 | Order Entry | 5d | 2018-01-31 | 2018-02-07 | 47 | 0.8d | 0d |  | Amy | 40h | 1,600 |
| 51 | 23.2 | Inventory | 5d | 2018-02-12 | 2018-02-16 | 50 | 0d |  | start no earlier than 2018-02-12 | Adam | 40h | 1,600 |
| 52 | 23.3 | Accounting | 5d | 2018-02-07 | 2018-02-14 | 50 | 0.8d | 0d |  | Amy | 40h | 1,600 |
| 53 | 23.4 | Integration | 1.5d | 2018-02-14 | 2018-02-16 | 52 | 0.8d |  |  | Amy | 12h | 480 |
| 54 | 24 | Operations Manual | 5d | 2018-01-31 | 2018-02-07 | 47 | 9.96d | 0d |  | Tony | 40h | 1,000 |
| 55 | 25 | **User Training** | 7.66d | 2018-02-19 | 2018-02-28 |  | 0d |  |  |  | 87.92h | 3,516.8 |
| 56 | 25.1 | Order Entry | 3.33d | 2018-02-19 | 2018-02-22 | 49 | 0d |  |  | Adam | 26.64h | 1,065.6 |
| 57 | 25.2 | Inventory | 3.33d | 2018-02-19 | 2018-02-22 | 49 | 0d |  |  | Amy | 26.64h | 1,065.6 |
| 58 | 25.3 | Accounting | 3.33d | 2018-02-22 | 2018-02-27 | 56, 57 | 0d |  |  | Adam | 26.64h | 1,065.6 |
| 59 | 25.4 | Integration | 1d | 2018-02-27 | 2018-02-28 | 58 | 0d |  |  | Amy | 8h | 320 |
| 60 | 26 | System Conversion | 5d | 2018-02-28 | 2018-03-07 | 55 | 0d |  |  | Amy; Charles; User3 | 120h | 4,400 |
